How a schedule from an exported table changed from version to version. A marks actual dates.

## Version 1 (saved 2026-10-16)

Note of the change: chore(roadmap): finding sulle foto altrui a serious, in programma come FOTO1 entro il 21/10

| ID | Task | Start | Finish |
| --- | --- | --- | --- |
| 15.4 | Activate email notifications (Resend): account, DNS/DKIM, env vars, deliverability test | 2026-12-01 | 2026-12-20 |
| 8.9 | Empty / error / loading states + server-side validation pass | 2026-08-15 | 2026-09-30 |
| Bx | Email notifications pipeline — si accende con RESEND_API_KEY + DNS/DKIM (vedi M3/15.4) |  |  |
| 10.10 | Adempimenti: riga nel registro trattamenti, informativa privacy, retention di vat_check_payload, ToS (una P.IVA per profilo, durata) | 2026-08-04 | 2026-08-29 |
| 10.13 | Registro verifiche: pagina dedicata con filtri (professionista, tipo evento, periodo, operatore), paginazione ed export CSV. Oggi in coda si vedono solo gli ultimi 100 movimenti | 2026-09-08 | 2026-09-25 |
| 10.1b | Gradino 3 via Openapi: stato+denominazione 2-5 centesimi a professionista (listino 01/08), PEC impresa 3 cent. Sandbox gratuita; serve DPA art.28 | 2026-09-01 | 2026-10-15 |
| 10.3 | Il livello pesa nel ranking (parametri dichiarati, Reg. P2B) + SLA 48h sulla coda | 2026-10-01 | 2026-10-31 |
| 10.4 | Scadenza della verifica (proposta 6 mesi) + ricontrollo periodico con declassamento assistito, mai automatico | 2026-08-04 | 2026-08-12 |
| 10.5 | Ritentativo notturno (cron Vercel, 22:00 UTC = mezzanotte italiana): esce subito se non c'e' nulla in attesa, max 5 notti per caso, non ripete a meno di 20h [mig 043] — si accende con CRON_SECRET in Vercel Production (vedi M1/10.14) |  |  |
| 10.7 | Telemetria in /admin/analisi: quanti tentano, quanti conferma il VIES, quanti finiscono a mano, tempi di lavorazione | 2026-08-08 | 2026-08-22 |
| 10.8 | Richiesta della P.IVA come ultimo passo dell'onboarding professionista AGGIORNAMENTO 14/08: l'onboarding pro ora esiste (piano → questionario → profilo) e la verifica e' gated sui tier a pagamento; decidere se la P.IVA diventa l'ultimo passo dell'onboarding per chi sceglie Pro/Business. | 2026-08-11 | 2026-08-25 |
| 10.9 | Casi limite: P.IVA sospesa per affitto d'azienda, Gruppo IVA, cessata + raccolta codice fiscale (base per DAC7) | 2026-09-01 | 2026-09-20 |
| 15.5 | Error monitoring, uptime alerts, backups; go-live checklist + rollback | 2026-12-10 | 2026-12-31 |
| N14 | Install a consent-exempt EU analytics tool (Plausible or Matomo, Garante 7.2) — no cookie banner, no user-level tracking. Nothing is installed today | 2026-09-01 | 2026-09-20 |
| N7 | Move the /admin/analisi aggregates into DB views (known debt from the 18 Jul note: computed in-page, fine at demo volume) | 2026-09-01 | 2026-09-30 |
| N8 | Decide whether abandoned chats get logged — only completed briefs are counted today, so funnel drop-off is invisible | 2026-09-01 | 2026-09-15 |
| 23 | Site legal docs (ToS, privacy, cookie + consent banner) + lawyer review | 2026-09-01 | 2026-11-30 |
| 25.1 | Registro trattamenti + retention policy; consent flows audit; breach procedure | 2026-11-01 | 2027-01-31 |
| 25.2 | DPAs with processors (Supabase, Vercel, Anthropic, Stripe, Resend) | 2026-11-15 | 2026-12-31 |
| N10 | DPIA on the matching / job-brief LLM flow, written before launch rather than after | 2026-09-01 | 2026-11-30 |
| N9 | Waitlist launch email needs an explicit 'contact me at launch' checkbox before a single send — no soft opt-in for Bob | 2026-09-01 | 2026-10-15 |
| 23.1 | Controllo consumeristico sul listino pro pubblicato l'08/08: la tabella elenca le funzioni del Business Plan §6.2, fra cui fatturazione elettronica integrata, pagamenti inclusi e analytics avanzate, che non esistono ancora in prodotto. Oggi il rischio e' contenuto perche' non c'e' checkout (il tier lo assegna l'admin), ma quando si accende Stripe (12.1) elencare funzioni non disponibili e' pratica commerciale ingannevole (Codice del Consumo art. 21-22). Decidere per ogni riga: costruirla, riscriverla o rimuoverla. | 2026-09-01 | 2026-11-30 |
| 11.1 | Ranking algorithm v1: response rate, closure rate, reviews (data logic) | 2026-10-01 | 2026-10-31 |
| 11.2 | Ranking explanation UI (seeded by 'why this pro' line) | 2026-10-15 | 2026-11-15 |
| 11.3 | Boost purchase + placement logic; quality floor | 2026-11-01 | 2026-11-30 |
| 12.1 | Stripe products & prices; checkout + customer portal | 2026-10-01 | 2026-11-30 |
| 12.2 | Webhooks -> subscription_tier sync (replaces manual switch) | 2026-11-01 | 2026-11-30 |
| 12.3 | Founding-pro coupon; failed payments, invoices, receipts | 2026-11-15 | 2026-12-31 |
| PG | Payments/subscriptions groundwork — si accende con Stripe (vedi M7/12.1) |  |  |
| 12.4 | Allineare il gating in codice al listino pubblicato su /per-i-professionisti (08/08): la tabella piani annuncia ranking privilegiato, richieste illimitate, preventivi digitali e assistente AI, ma oggi il tier gates SOLO le foto portfolio (PORTFOLIO_LIMITS 0/1/illimitato) e la prenotazione diretta (InstantBookingConfig, pro+). Finche' il gating non c'e', il Free ha di fatto quasi tutto il Pro: nessuno ha motivo di pagare. Va chiuso PRIMA del checkout (12.1). | 2026-10-01 | 2026-12-31 |
| 13.2 | Pagine servizio x citta'. FATTO il 10/08: rotta /servizi/{servizio}/{citta} per le sole citta' attive (le non attive restano sulla waitlist di /citta/[slug] per non fare doorway page), fascia di prezzo reale dalle tariffe dichiarate, JSON-LD Service+AggregateOffer+BreadcrumbList, parametri di ranking dichiarati in pagina (P2B art. 5), sitemap con le sole combinazioni che hanno almeno un professionista, link interni da /servizi/[slug] e /citta/[slug]. RESTA: ottimizzazione keyword sui title, contenuto locale unico per citta' (SEO.md §5.6) e le categorie core di Milano - oggi le combinazioni reali sono 5 e tutte a Milano, con UN professionista ciascuna: 5 professionisti in tutta la piattaforma, 3 verificati. CORREZIONE al messaggio del commit 4587dd1, che diceva 'pulizie 4 pro': erano 4 righe di professional_services, cioe' 4 sottoservizi dello stesso professionista, non 4 persone. La leva vera e' l'acquisizione (M8/30), non altro codice. | 2026-08-01 | 2026-10-31 |
| 14 | Google Business Profile + local presence | 2026-11-01 | 2026-12-31 |
| 15.1 | End-to-end QA of all flows (client, pro, admin) | 2026-12-01 | 2026-12-15 |
| 15.2 | Performance / Core Web Vitals pass | 2026-12-01 | 2026-12-20 |
| 15.3 | Freelance security review (pre-launch) | 2026-12-01 | 2026-12-20 |
| 30 | Founder outreach — first 100 Milano pros | 2026-10-01 | 2027-03-31 |
| N11 | Go-live checklist + a tested rollback (the written-down half of 15.5) | 2026-12-01 | 2026-12-31 |
| 15.6 | Estendere BobDot/BobBullet (src/components/ui.tsx, introdotti l'08/08) agli elenchi decorativi rimasti: empty state della dashboard, FAQ, pagine legali, ProWorkspace. Il pallino giallo e' l'unico segno di marca riconoscibile a colpo d'occhio; oggi vive su homepage e pagina pro. NON toccare i middot fra dati ('10:00 - Mario Rossi'): li' il separatore serve a leggere. | 2026-11-01 | 2026-12-31 |
| 16.1 | Production cutover; activate founding pros (60-80) in 5 core categories | 2027-01-01 | 2027-01-31 |
| 16.2 | Bob Pro subscriptions live (Stripe) + Boost on; launch PR wave | 2027-01-01 | 2027-01-31 |
| 31 | Launch incentives (3 months free Bob Pro for founding pros) | 2027-01-01 | 2027-03-31 |
| 32 | Paid ads ignition — Milano only (CAC < EUR25 Q1) | 2027-01-01 | 2027-06-30 |
| 33 | PR launch ('AI concierge che trova il professionista giusto con prezzi chiari') | 2027-01-01 | 2027-03-31 |
| 24 | Trademark 'Bob' (UIBM/EUIPO, classes 35, 42) | 2026-09-01 | 2026-10-31 |
| 26 | SRL incorporation (Q1 Year 1) | 2026-12-01 | 2027-02-28 |
| 27 | Finanza agevolata application (Q2 Year 1) | 2027-04-01 | 2027-06-30 |
| 28 | Garanzia Bob legal framework + payments compliance (Stripe Connect KYC) | 2027-05-01 | 2027-09-30 |
| 13 | SEO content engine (ongoing) | 2026-08-01 | 2027-12-31 |
| 13.3 | 'Quanto costa' price guides; Roma+Torino pages before activation | 2026-10-01 | 2027-03-31 |
| 17 | Unlimited requests (subscribers) + digital quotes |  |  |
| 17.1 | Free-tier request limits + upgrade paywall |  |  |
| 17.2 | Quote builder for pros + client quote comparison + accept flow |  |  |
| 18 | Security audit (gate before payments) |  |  |
| 19 | Protected flow — payments + Garanzia Bob |  |  |
| 19.1 | Stripe Connect: deposit/escrow, payouts; dispute + mediation tooling |  |  |
| 19.2 | Verified reviews tied to protected jobs; 8% success fee billing |  |  |
| 20 | Roma + Torino activation |  |  |
| 21 | Bologna, Firenze, Napoli activation |  |  |
| 22 | National infrastructural opening (organic only) |  |  |
| 34 | Pro referral program + territorial partnerships |  |  |
| 36 | End-Q1 2027: 60-80 active pros, 150+ req/mo, match >60% |  |  |
| 37 | End-2027: 600 pros, 1,500 req/mo, 25% protected-flow, CAC < EUR15 |  |  |
| 38 | Business accounts — multi-employee organizations (manage workers + appointments) |  |  |
| 38.0 | Design spike: org data model — DECIDED, see docs/Bob_Business_Accounts_Design_Spike.md (Bundle 2, additive; workers-as-records; company assigns) |  |  |
| 38.1 | organizations + organization_members + roles (owner/admin/worker); RLS pool model via is_org_member(); retention + deletion path |  |  |
| 38.2a | Worker-level scheduling: per-worker availability + assignment + DB overlap constraint (btree_gist exclude); company assigns |  |  |
| 38.2b | Communication step 1 (office-as-hub): company identity + worker attribution (sender_member_id); dispatcher messages/reschedules for worker |  |  |
| 38.3 | Business onboarding + docs: company VAT/visura verification, seat management (extends #10) |  |  |
| 38.4 | Multi-seat Business billing — per-seat via Stripe quantity (extends #12) |  |  |
| 38.5 | Compliance: employer-as-controller DPA + RoPA rows; Platform Work Directive / Annex III scope check |  |  |

| ID | Task | Start | Finish |
| --- | --- | --- | --- |
| 38.6 | Step 2 (PILOT-GATED, form TBD): scoped worker access — per-job magic link or limited login; least-privilege RLS |  |  |
| 39 | Two-way reviews — business to client reliability signal (PRIVATE, not public consumer scores) |  |  |
| 39.0 | DPIA + LIA + policy: private reliability signal; retaliation guard; Art 22 no auto-exclude; transparency + right to object |  |  |
| 39.1 | Schema: customer reliability ratings tied to completed appointment/request; RLS; de-identify on deletion |  |  |
| 39.2 | Pro UI to rate reliability; customer transparency + right-to-reply; align with verified reviews #19.2 |  |  |
| 40 | Parking & vehicle-access metric (can my car reach the address? parking nearby?) |  |  |
| 40.0 | Address geocoding enabler (address to coarse zone; maps vendor DPA/EU) — prerequisite |  |  |
| 40.1 | ZTL / Area B & C vehicle-access checker (vehicle emission class + Milan zone rules) — deterministic, high value for out-of-town pros |  |  |
| 40.2 | Parking-difficulty index + nearby paid-garage links (research spike first; real-time free-spot count not feasible) |  |  |
| 40.3 | Map of the day itinerary in the pro calendar (pins in time order) — depends on 40.0 geocoding + vendor DPA |  |  |
| 10.11 | DECISIONE: cosa sblocca il livello — categorie con gate al contatto, durata, peso nel ranking, cosa puo' fare un Iscritto (doc §6). Parcheggiata il 14/08 (da decidere con André, data da destinarsi). NOTA 14/08 sera: una parte e' stata di fatto decisa da Lucio col nuovo onboarding — la verifica P.IVA e' ora ESCLUSIVA dei piani a pagamento (Pro/Business), il Free non la vede. Da ratificare con André insieme al resto della decisione. |  |  |
| N12 | La cancellazione account deve svuotare anche la cartella <user_id>/ del bucket verifica-documenti: le righe di verification_documents cadono a cascata (FK), i FILE nello storage no. Registrato come punto 8 delle lacune ROPA. Regola di progetto: ogni tabella nuova ha un percorso di cancellazione — per lo storage va costruito. | 2026-09-01 | 2026-11-30 |
| AREA1 | Area personale: LAVORO e IMPOSTAZIONI separati (revisione di Lucio del 19/08 pomeriggio - "sono 2 robe diverse"). Nella prima versione tutto stava sotto /dashboard e la barra laterale metteva "Oggi" accanto a "Accesso e sicurezza": il lavoro di ogni giorno sulla stessa fila di cose che si aprono due volte l'anno. Ora /dashboard e' SOLO lavoro (pro: richieste, calendario, giornata; cliente: lavori in corso, appuntamenti, e un bottone per cercare un professionista) e le 9 sezioni di configurazione vivono sotto /impostazioni con un guscio proprio, che in cima ha il ritorno al lavoro. HEADER: via l'etichetta "Account", identica per tutti e muta su cosa contenesse; il bottone visibile porta al lavoro e dipende dal ruolo ("Il mio lavoro" / "I miei lavori"), la configurazione e' un'icona UserCog accanto - non Settings, che nello stesso header e' gia' il pannello Admin. Quattro redirect 307 in next.config.mjs, con i due casi speciali PRIMA del jolly. Aggiunti /impostazioni a robots.ts e a ProBanner. TROVATO CON LA PROVA SULLE ROTTE, non leggendo il file: il jolly scritto :sezione* combaciava anche con ZERO segmenti, quindi /dashboard nudo rimbalzava su /impostazioni e l'area di lavoro era irraggiungibile - corretto in :sezione+. RESTA PER CHIUDERLA: controllo dal vivo dopo il deploy (desktop e 390px), con attenzione al bottone del ruolo nel header e al ritorno dal guscio delle impostazioni. | 2026-08-19 | 2026-08-31 |
| 10.15 | registraGiro() anche al return finale di api/cron/verifica-piva, con i contatori confermati/daEsaminare/ancoraGiu gia' calcolati nel corpo. Oggi la chiamata sta solo sul ramo casi.length === 0, e si vede: 11 giri su 11 scrivono esaminati 0. Un semaforo verde che dimostra solo che il processo parte. Con l'outreach di ottobre serve sapere cosa ha fatto. | 2026-08-19 | 2026-09-05 |
| P2.16 | Scadenza e decadenza del codice fondatori. Verificato il 19/08: BOB-FOUNDER-2026 ha max_uses NULL e expires_at NULL, cioe' Bob Business gratis, illimitato e senza scadenza per chiunque abbia il codice. Il piano del 18/08 da' per scontato che i promo dei primi sessanta scadano a febbraio: nel database non c'e' niente che scada. Con 3 pro non e' un problema, da ottobre con il codice in giro per l'outreach lo diventa. Serve: un tetto, una scadenza, e un declassamento mai automatico (preavviso + motivazione, art. 4 P2B). /dashboard/piano oggi dice la verita' al pro - "non ha una data di scadenza" - il che rende il problema visibile invece che implicito. | 2026-08-19 | 2026-09-30 |
| PWD2 | Doppia password all'iscrizione. Il form aveva UN solo campo e nessun controllo di lunghezza lato client, con placeholder e minLength ancora a 6 mentre Supabase rifiuta sotto gli 8 dal 9 agosto: chi sbagliava a digitare si registrava con una password che non conosceva e l'unica uscita era 'password dimenticata'. Funziona - quella mail la manda Supabase, non Resend - ma e' un giro che non deve servire, e a ottobre lo farebbe un professionista appena reclutato al telefono. Ora: secondo campo in iscrizione, avviso immediato se non coincidono, soglia PASSWORD_MIN=8 in una costante sola. CONDIZIONE PER CHIUDERLA: push, deploy e una prova di iscrizione vera. | 2026-08-19 | 2026-08-26 |
| CANC1 | Cancellazione account: scritta e provata, IN ATTESA DI DEPLOY. Condizioni per chiuderla: (1) push e deploy; (2) CRON_SECRET e' gia' in produzione ma il nuovo cron /api/cron/cancella-account e' registrato in vercel.json solo da questo commit, quindi il primo giro va verificato in system_job_runs - questa volta la riga si scrive SEMPRE, anche a vuoto e in errore, proprio per non ripetere gli undici semafori verdi di verifica-piva; (3) una prova end-to-end vera: chiedere la cancellazione di un account di test, controllare che sparisca dagli elenchi, annullare, ricontrollare che torni. AGGIORNAMENTO 25/08: "in attesa di deploy" era vero solo a meta', perche' non c'era niente da deployare. Il codice non era mai stato committato: dal 19 al 25 agosto la 056 e' stata in produzione mentre le 996 righe che la usano non stavano in nessun commit e su nessun ramo (git log --all --grep=cancellazione: zero risultati) - vivevano solo in un file di patch salvato nel progetto Claude. Ripristinate il 25/08 col commit db49be7, verificando una per una le 20 impronte git scritte nel patch: tutte coincidono, quindi il ripristino e' il lavoro del 19/08 byte per byte e non una riscrittura. Build e lint puliti; deploy confermato dall'esterno, perche' il testo nuovo dell'informativa e' comparso su www.meetonda.com/privacy. LA LEZIONE, che vale piu' di questa riga: e' la SECONDA volta dopo la 015/016 che una migrazione vive in produzione senza il suo file nel repo, e stavolta si e' portata dietro anche il codice. Il controllo che manca non e' umano: nessuno script confronta la storia delle migrazioni live con supabase/migrations, e finche' non c'e' la prossima deriva la trovera' un'ispezione, non un test. RESTA PER CHIUDERLA: il primo giro del cron in system_job_runs (dopo le 23:00 UTC) e la prova end-to-end vera. | 2026-08-19 | 2026-08-26 |
| RET1 | Job di retention (P3.9). Due regole sono DICHIARATE nel ROPA e non ancora APPLICATE da nessun codice, e finche' e' cosi' quelle righe del registro sono incomplete: i ticket di assistenza anonimi (support_tickets con user_id null) vanno cancellati dopo 12 mesi, e i dati di prospect/waitlist idem. Il cron della cancellazione account e' il posto naturale dove aggiungerle: gira ogni notte e ha gia' il service role e la registrazione del giro. | 2026-10-01 | 2026-10-31 |
| FOTO1 | Un cliente non deve poter farsi dare la foto di un altro (findings.csv, serious, 16/10). /api/bob/brief salva i percorsi delle foto come li manda il browser, e l'export art. 15/20 e /api/pro/request-summary li usano col service role. Correzione: /api/bob/chat restituisce col percorso un'attestazione firmata dal server, /api/bob/brief scarta ogni percorso non attestato; export e request-summary rifiutano un percorso citato da un brief di un altro. Fatto quando: un brief salvato col percorso della foto di un altro non la fa uscire ne' dall'export ne' da request-summary, provato dal vivo. | 2026-10-16 | 2026-10-21 |

## Version 2 (saved 2026-10-16)

Note of the change: Merge pull request #186 from UnicorniDiBob/cron-cancella-foto

Last finish stays 2027-12-31.

Added:

| ID | Task | Start | Finish |
| --- | --- | --- | --- |
| CANC2 | La cancellazione dell'account provata anche dove la prova del 16/10 non arriva (findings.csv, serious). Leggere il corpo vivo dei 14 trigger SECURITY INVOKER su tabelle raggiunte dalla cancellazione, poi scripts/prova_cancellazione.mjs esteso a un cliente con richieste, collegamenti, messaggi e appuntamenti, e a un professionista con servizi, verifica e copertura. Fatto quando: tutti e due cancellati dal cron (cancellati 2, falliti 0) e la pulizia verificata; ogni trigger che fallisce corretto con la sua migrazione nella stessa PR. | 2026-10-17 | 2026-10-21 |

## Version 3 (saved 2026-10-17)

Note of the change: fix(foto1): un cliente non si fa piu' dare la foto di un altro

Last finish stays 2027-12-31.

Removed: CANC2 La cancellazione dell'account provata anche dove la prova del 16/10 non arriva (findings.csv, serious). Leggere il corpo vivo dei 14 trigger SECURITY INVOKER su tabelle raggiunte dalla cancellazione, poi scripts/prova_cancellazione.mjs esteso a un cliente con richieste, collegamenti, messaggi e appuntamenti, e a un professionista con servizi, verifica e copertura. Fatto quando: tutti e due cancellati dal cron (cancellati 2, falliti 0) e la pulizia verificata; ogni trigger che fallisce corretto con la sua migrazione nella stessa PR.

Changed:

| ID | Task | Other |
| --- | --- | --- |
| FOTO1 | Un cliente non deve poter farsi dare la foto di un altro (findings.csv, serious, 16/10). /api/bob/brief salva i percorsi delle foto come li manda il browser, e l'export art. 15/20 e /api/pro/request-summary li usano col service role. Correzione: /api/bob/chat restituisce col percorso un'attestazione firmata dal server, /api/bob/brief scarta ogni percorso non attestato; export e request-summary rifiutano un percorso citato da un brief di un altro. Fatto quando: un brief salvato col percorso della foto di un altro non la fa uscire ne' dall'export ne' da request-summary, provato dal vivo. 17/10: codice e prova dal vivo verdi (ramo foto1-foto-altrui, scripts/prova_foto1.mjs); finding chiuso. Si chiude qui dopo il merge, con BRIEF_PHOTOS_SECRET su Vercel e una foto di chat vista dal vivo in un brief di produzione. | was named Un cliente non deve poter farsi dare la foto di un altro (findings.csv, serious, 16/10). /api/bob/brief salva i percorsi delle foto come li manda il browser, e l'export art. 15/20 e /api/pro/request-summary li usano col service role. Correzione: /api/bob/chat restituisce col percorso un'attestazione firmata dal server, /api/bob/brief scarta ogni percorso non attestato; export e request-summary rifiutano un percorso citato da un brief di un altro. Fatto quando: un brief salvato col percorso della foto di un altro non la fa uscire ne' dall'export ne' da request-summary, provato dal vivo. |
